# 大学生电子商务网

Schedule from MS Project, 2012-09-13 to 2012-11-07, costs in ¥, A marks actual dates.

## Calendars

- 标准: Mon-Fri 08:00-12:00, 13:00-17:00; Sat-Sun off.

## Resources

| Resource | Group | Rate |
| --- | --- | --- |
| 王聪朝 | 项目经理 | 40 |
| 王兆雪 | 需求专家 | 30 |
| 刘文朋 | 设计专家 | 30 |
| 邓燕鸿 | UI专家 | 25 |
| 质量专家 |  | 25 |
| 张泽卿 | 程序员 | 25 |
| 程序员2 |  | 25 |
| 程序员3 |  | 25 |
| 高娴 | 测试员 | 25 |
| 测试员2 |  | 25 |
| 网线 |  | 20 |
| 培训 |  |  |
| 间接成本 |  |  |
| 储备 |  |  |

## Schedule

| ID | WBS | Task | Type | Duration | Start | Finish | Predecessors | Complete | Remaining | Baseline start | Baseline finish | Baseline duration | Total slack | Resources | Work | Actual work | Cost | Baseline cost | Actual cost |
| --- | --- | --- | --- | --- | --- | --- | --- | --- | --- | --- | --- | --- | --- | --- | --- | --- | --- | --- | --- |
| 1 | 1 | **启动** |  | 3d | 2012-09-13 A | 2012-09-17 A |  | 100% |  | 2012-09-13 | 2012-09-17 | 3d? |  | 间接成本 [0.1%]; 储备 [0.1%] | 64h | 64h | 12,060 | 12,060 | 12,060 |
| 2 | 1.1 | 组建核心团队 | manual | 2h | 2012-09-13 A | 2012-09-13 A |  | 100% |  | 2012-09-13 | 2012-09-13 | 2h |  | 王聪朝; 邓燕鸿; 刘文朋; 王兆雪; 质量专家 | 10h | 10h | 300 | 300 | 300 |
| 3 | 1.2 | 干系人分析 | manual | 3h | 2012-09-13 A | 2012-09-13 A |  | 100% |  | 2012-09-13 | 2012-09-13 | 3h |  | 王聪朝 | 3h | 3h | 120 | 120 | 120 |
| 4 | 1.3 | 里程碑计划 | manual | 3h | 2012-09-13 A | 2012-09-13 A |  | 100% |  | 2012-09-13 | 2012-09-13 | 3h |  | 王聪朝 | 3h | 3h | 120 | 120 | 120 |
| 5 | 1.4 | 制定项目章程 | manual | 1d | 2012-09-14 A | 2012-09-14 A | 2, 3, 4 | 100% |  | 2012-09-14 | 2012-09-14 | 1d? |  | 王聪朝 | 8h | 8h | 320 | 320 | 320 |
| 6 | 1.5 | 项目启动大会 | manual | 1d | 2012-09-17 A | 2012-09-17 A | 5 | 100% |  | 2012-09-17 | 2012-09-17 | 1d? |  | 王聪朝; 王兆雪; 刘文朋; 邓燕鸿; 质量专家 | 40h | 40h | 1,200 | 1,200 | 1,200 |
| 7 | 2 | **规划** |  | 21d? | 2012-09-18 A | 2012-10-16 |  | 39% | 12.75d? | 2012-09-18 | 2012-10-09 | 16d? | 0d |  | 560h | 220h | 19,160 | 17,720 | 6,520 |
| 8 | 2.1 | **规划范围** |  | 21d? | 2012-09-18 A | 2012-10-16 |  | 86% | 2.95d? | 2012-09-18 | 2012-10-01 | 10d? | 0d |  | 256h | 220h | 7,960 | 6,520 | 6,520 |
| 9 | 2.1.1 | 制定需求说明书 | manual | 12d | 2012-09-18 A | 2012-10-03 A | 6 | 100% |  | 2012-09-18 | 2012-10-01 | 10d |  | 王兆雪 | 96h | 96h | 2,880 | 2,400 | 2,880 |
| 10 | 2.1.2 | 界面设计 | manual | 5d | 2012-10-04 A | 2012-10-10 A | 9 | 100% |  | 2012-09-19 | 2012-09-25 | 5d |  | 邓燕鸿 | 40h | 40h | 1,000 | 1,000 | 1,000 |
| 11 | 2.1.3 | 详细设计说明书 | manual | 9d | 2012-10-04 A | 2012-10-16 A | 9 | 100% |  | 2012-09-19 | 2012-09-25 | 5d |  | 刘文朋 | 72h | 72h | 2,160 | 1,200 | 2,160 |
| 12 | 2.1.4 | 项目范围说明书 | manual | 3d | 2012-09-19 A | 2012-09-21 | 9 | 25% | 2.25d | 2012-09-19 | 2012-09-21 | 3d |  | 王聪朝 | 24h | 6h | 960 | 960 | 240 |
| 13 | 2.1.5 | 创建WBS | manual | 2d | 2012-09-20 A | 2012-09-21 | 10, 11, 12 | 25% | 1.5d | 2012-09-20 | 2012-09-21 | 2d |  | 王聪朝 | 16h | 4h | 640 | 640 | 160 |
| 14 | 2.1.6 | 形成范围基准 | manual | 1d? | 2012-09-21 A | 2012-09-21 | 13 | 25% | 0.75d? | 2012-09-21 | 2012-09-21 | 1d? |  | 王聪朝 | 8h | 2h | 320 | 320 | 80 |
| 15 | 2.2 | **规划时间** |  | 5d? | 2012-09-24 | 2012-09-28 |  |  |  | 2012-09-24 | 2012-09-28 | 5d? | 0d |  | 56h |  | 2,240 | 2,240 |  |
| 16 | 2.2.1 | 排列工作包顺序 | manual | 1d? | 2012-09-24 | 2012-09-24 | 14 |  |  | 2012-09-24 | 2012-09-24 | 1d? |  | 王聪朝 | 8h |  | 320 | 320 |  |
| 17 | 2.2.2 | 估算资源 | manual | 2d | 2012-09-25 | 2012-09-26 | 16 |  |  | 2012-09-25 | 2012-09-26 | 2d |  | 王聪朝 | 16h |  | 640 | 640 |  |
| 18 | 2.2.3 | 估算持续时间 | manual | 2d | 2012-09-26 | 2012-09-27 | 17 |  |  | 2012-09-26 | 2012-09-27 | 2d |  | 王聪朝 | 16h |  | 640 | 640 |  |
| 19 | 2.2.4 | 制定进度计划 | manual | 1d? | 2012-09-27 | 2012-09-27 | 18 |  |  | 2012-09-27 | 2012-09-27 | 1d? |  | 王聪朝 | 8h |  | 320 | 320 |  |
| 20 | 2.2.5 | 形成进度基准 | manual | 1d? | 2012-09-28 | 2012-09-28 | 19 |  |  | 2012-09-28 | 2012-09-28 | 1d? |  | 王聪朝 | 8h |  | 320 | 320 |  |
| 21 | 2.3 | **规划成本** |  | 3d? | 2012-10-01 | 2012-10-03 |  |  |  | 2012-10-01 | 2012-10-03 | 3d? | 0d |  | 48h |  | 1,920 | 1,920 |  |
| 22 | 2.3.1 | 项目成本估算 | manual | 3d | 2012-10-01 | 2012-10-03 | 20 |  |  | 2012-10-01 | 2012-10-03 | 3d |  | 王聪朝 | 24h |  | 960 | 960 |  |
| 23 | 2.3.2 | 项目预算 | manual | 2d | 2012-10-02 | 2012-10-03 | 22 |  |  | 2012-10-02 | 2012-10-03 | 2d |  | 王聪朝 | 16h |  | 640 | 640 |  |
| 24 | 2.3.3 | 形成范围基准 | manual | 1d? | 2012-10-03 | 2012-10-03 | 23 |  |  | 2012-10-03 | 2012-10-03 | 1d? |  | 王聪朝 | 8h |  | 320 | 320 |  |

| ID | WBS | Task | Type | Duration | Start | Finish | Predecessors | Baseline start | Baseline finish | Baseline duration | Total slack | Resources | Work | Cost | Baseline cost |
| --- | --- | --- | --- | --- | --- | --- | --- | --- | --- | --- | --- | --- | --- | --- | --- |
| 25 | 2.4 | **规划质量** |  | 7d | 2012-09-24 | 2012-10-02 |  | 2012-09-24 | 2012-10-02 | 7d | 0d |  | 64h | 1,600 | 1,600 |
| 26 | 2.4.1 | 制定测试计划 | manual | 2d | 2012-09-24 | 2012-09-25 | 14 | 2012-09-24 | 2012-09-25 | 2d |  | 质量专家 | 16h | 400 | 400 |
| 27 | 2.4.2 | 制定测试用例 | manual | 6d | 2012-09-25 | 2012-10-02 | 26 | 2012-09-25 | 2012-10-02 | 6d |  | 质量专家 | 48h | 1,200 | 1,200 |
| 28 | 2.5 | **规划人力资源** |  | 3d | 2012-09-26 | 2012-09-28 |  | 2012-09-26 | 2012-09-28 | 3d | 0d |  | 32h | 1,280 | 1,280 |
| 29 | 2.5.1 | 制定人力资源计划 | manual | 2d | 2012-09-26 | 2012-09-27 | 17 | 2012-09-26 | 2012-09-27 | 2d |  | 王聪朝 | 16h | 640 | 640 |
| 30 | 2.5.2 | 制定人员配备管理计划 | manual | 2d | 2012-09-27 | 2012-09-28 | 29 | 2012-09-27 | 2012-09-28 | 2d |  | 王聪朝 | 16h | 640 | 640 |
| 31 | 2.6 | **规划沟通** |  | 2d | 2012-09-28 | 2012-10-01 |  | 2012-09-28 | 2012-10-01 | 2d | 0d |  | 16h | 640 | 640 |
| 32 | 2.6.1 | 制定沟通管理计划 | manual | 2d | 2012-09-28 | 2012-10-01 | 30 | 2012-09-28 | 2012-10-01 | 2d |  | 王聪朝 | 16h | 640 | 640 |
| 33 | 2.7 | **规划采购** |  | 6d | 2012-09-26 | 2012-10-03 |  | 2012-09-26 | 2012-10-03 | 6d | 0d |  | 56h | 2,240 | 2,240 |
| 34 | 2.7.1 | 自制外购分析 | manual | 2d | 2012-09-26 | 2012-09-27 | 17 | 2012-09-26 | 2012-09-27 | 2d |  | 王聪朝 | 16h | 640 | 640 |
| 35 | 2.7.2 | 制定采购文件 | manual | 5d | 2012-09-27 | 2012-10-03 | 34 | 2012-09-27 | 2012-10-03 | 5d |  | 王聪朝 | 40h | 1,600 | 1,600 |
| 36 | 2.8 | **规划风险** |  | 3d? | 2012-10-04 | 2012-10-08 |  | 2012-10-04 | 2012-10-08 | 3d? | 0d |  | 24h | 960 | 960 |
| 37 | 2.8.1 | 识别风险 | manual | 1d? | 2012-10-04 | 2012-10-04 | 15, 21, 25, 28, 31, 33 | 2012-10-04 | 2012-10-04 | 1d? |  | 王聪朝 | 8h | 320 | 320 |
| 38 | 2.8.2 | 风险分析 | manual | 1d? | 2012-10-05 | 2012-10-05 | 37 | 2012-10-05 | 2012-10-05 | 1d? |  | 王聪朝 | 8h | 320 | 320 |
| 39 | 2.8.3 | 制定风险登记册 | manual | 1d? | 2012-10-08 | 2012-10-08 | 38 | 2012-10-08 | 2012-10-08 | 1d? |  | 王聪朝 | 8h | 320 | 320 |
| 40 | 2.9 | 规划整合 | manual | 1d? | 2012-10-09 | 2012-10-09 | 39 | 2012-10-09 | 2012-10-09 | 1d? |  | 王聪朝 | 8h | 320 | 320 |
| 41 | 3 | **执行与监控** |  | 21d? | 2012-10-10 | 2012-11-07 |  | 2012-10-10 | 2012-11-07 | 21d? | 0d |  | 1072h | 32,540 | 32,540 |
| 42 | 3.1 | 组建项目团队 | manual | 3d | 2012-10-10 | 2012-10-12 | 7 | 2012-10-10 | 2012-10-12 | 3d |  | 王聪朝; 高娴; 测试员2; 张泽卿; 程序员2; 程序员3; 培训 [0.1%] | 144h | 4,460 | 4,460 |
| 43 | 3.2 | **项目执行** |  | 9d? | 2012-10-11 | 2012-10-23 |  | 2012-10-11 | 2012-10-23 | 9d? | 0d |  | 296h | 7,400 | 7,400 |
| 44 | 3.2.1 | **用户模块** |  | 9d | 2012-10-11 | 2012-10-23 |  | 2012-10-11 | 2012-10-23 | 9d | 0d |  | 144h | 3,600 | 3,600 |
| 45 | 3.2.1.1 | 注册登录 | manual | 3d | 2012-10-11 | 2012-10-15 | 42 | 2012-10-11 | 2012-10-15 | 3d |  | 张泽卿 | 24h | 600 | 600 |
| 46 | 3.2.1.2 | 首页 | manual | 3d | 2012-10-12 | 2012-10-16 | 45 | 2012-10-12 | 2012-10-16 | 3d |  | 张泽卿 | 24h | 600 | 600 |
| 47 | 3.2.1.3 | 浏览商品 | manual | 2d | 2012-10-15 | 2012-10-16 | 46 | 2012-10-15 | 2012-10-16 | 2d |  | 张泽卿 | 16h | 400 | 400 |
| 48 | 3.2.1.4 | 搜索商品 | manual | 2d | 2012-10-16 | 2012-10-17 | 47 | 2012-10-16 | 2012-10-17 | 2d |  | 张泽卿 | 16h | 400 | 400 |
| 49 | 3.2.1.5 | 购物车 | manual | 3d | 2012-10-17 | 2012-10-19 | 48 | 2012-10-17 | 2012-10-19 | 3d |  | 张泽卿 | 24h | 600 | 600 |
| 50 | 3.2.1.6 | 下单 | manual | 2d | 2012-10-18 | 2012-10-19 | 49 | 2012-10-18 | 2012-10-19 | 2d |  | 张泽卿 | 16h | 400 | 400 |
| 51 | 3.2.1.7 | 个人配置 | manual | 3d | 2012-10-19 | 2012-10-23 | 50 | 2012-10-19 | 2012-10-23 | 3d |  | 张泽卿 | 24h | 600 | 600 |

| ID | WBS | Task | Type | Duration | Start | Finish | Predecessors | Baseline start | Baseline finish | Baseline duration | Total slack | Resources | Work | Cost | Baseline cost |
| --- | --- | --- | --- | --- | --- | --- | --- | --- | --- | --- | --- | --- | --- | --- | --- |
| 52 | 3.2.2 | **商家模块** |  | 6d | 2012-10-11 | 2012-10-18 |  | 2012-10-11 | 2012-10-18 | 6d | 0d |  | 88h | 2,200 | 2,200 |
| 53 | 3.2.2.1 | 注册入住 | manual | 2d | 2012-10-11 | 2012-10-12 | 42 | 2012-10-11 | 2012-10-12 | 2d |  | 程序员2 | 16h | 400 | 400 |
| 54 | 3.2.2.2 | 商品管理 | manual | 3d | 2012-10-12 | 2012-10-16 | 53 | 2012-10-12 | 2012-10-16 | 3d |  | 程序员2 | 24h | 600 | 600 |
| 55 | 3.2.2.3 | 订单处理 | manual | 2d | 2012-10-15 | 2012-10-16 | 54 | 2012-10-15 | 2012-10-16 | 2d |  | 程序员2 | 16h | 400 | 400 |
| 56 | 3.2.2.4 | 统计 | manual | 2d | 2012-10-16 | 2012-10-17 | 55 | 2012-10-16 | 2012-10-17 | 2d |  | 程序员2 | 16h | 400 | 400 |
| 57 | 3.2.2.5 | 商家配置 | manual | 2d | 2012-10-17 | 2012-10-18 | 56 | 2012-10-17 | 2012-10-18 | 2d |  | 程序员2 | 16h | 400 | 400 |
| 58 | 3.2.3 | **管理员模块** |  | 5d? | 2012-10-11 | 2012-10-17 |  | 2012-10-11 | 2012-10-17 | 5d? | 0d |  | 64h | 1,600 | 1,600 |
| 59 | 3.2.3.1 | 商家审核 | manual | 2d | 2012-10-11 | 2012-10-12 | 42 | 2012-10-11 | 2012-10-12 | 2d |  | 程序员3 | 16h | 400 | 400 |
| 60 | 3.2.3.2 | 促销活动 | manual | 3d | 2012-10-12 | 2012-10-16 | 59 | 2012-10-12 | 2012-10-16 | 3d |  | 程序员3 | 24h | 600 | 600 |
| 61 | 3.2.3.3 | 统计分析 | manual | 1d? | 2012-10-15 | 2012-10-15 | 60 | 2012-10-15 | 2012-10-15 | 1d? |  | 程序员3 | 8h | 200 | 200 |
| 62 | 3.2.3.4 | 备份 | manual | 2d | 2012-10-16 | 2012-10-17 | 61 | 2012-10-16 | 2012-10-17 | 2d |  | 程序员3 | 16h | 400 | 400 |
| 63 | 3.3 | **项目监控** |  | 3d? | 2012-10-11 | 2012-10-15 |  | 2012-10-11 | 2012-10-15 | 3d? | 0d |  | 168h | 5,520 | 5,520 |
| 64 | 3.3.1 | 各项指标监控 | manual | 1d? | 2012-10-11 | 2012-10-11 | 42 | 2012-10-11 | 2012-10-11 | 1d? |  | 高娴; 王聪朝; 测试员2; 网线 [3000%] | 24h | 1,320 | 1,320 |
| 65 | 3.3.2 | 监控评审 | manual | 1d? | 2012-10-12 | 2012-10-12 | 64 | 2012-10-12 | 2012-10-12 | 1d? |  | 刘文朋; 王聪朝; 王兆雪; 质量专家 | 32h | 1,000 | 1,000 |
| 66 | 3.3.3 | 变更评审 | manual | 1d? | 2012-10-15 | 2012-10-15 | 65 | 2012-10-15 | 2012-10-15 | 1d? |  | 刘文朋; 王聪朝; 王兆雪; 质量专家 | 32h | 1,000 | 1,000 |
| 67 | 3.3.4 | 例会 | manual | 1d? | 2012-10-11 | 2012-10-11 | 42 | 2012-10-11 | 2012-10-11 | 1d? |  | 邓燕鸿; 高娴; 测试员2; 张泽卿; 程序员2; 程序员3; 刘文朋; 王聪朝; 王兆雪; 质量专家 | 80h | 2,200 | 2,200 |
| 68 | 3.4 | **管理干系人** |  | 1d? | 2012-10-11 | 2012-10-11 |  | 2012-10-11 | 2012-10-11 | 1d? | 0d |  | 24h | 960 | 960 |
| 69 | 3.4.1 | 发布项目信息 | manual | 1d? | 2012-10-11 | 2012-10-11 | 42 | 2012-10-11 | 2012-10-11 | 1d? |  | 王聪朝 | 8h | 320 | 320 |
| 70 | 3.4.2 | 报告监控指标 | manual | 1d? | 2012-10-11 | 2012-10-11 | 42 | 2012-10-11 | 2012-10-11 | 1d? |  | 王聪朝 | 8h | 320 | 320 |
| 71 | 3.4.3 | 干系人沟通 | manual | 1d? | 2012-10-11 | 2012-10-11 | 42 | 2012-10-11 | 2012-10-11 | 1d? |  | 王聪朝 | 8h | 320 | 320 |
| 72 | 3.5 | **团队建设** |  | 1d? | 2012-10-11 | 2012-10-11 |  | 2012-10-11 | 2012-10-11 | 1d? | 0d |  | 240h | 6,600 | 6,600 |
| 73 | 3.5.1 | 培训 | manual | 1d? | 2012-10-11 | 2012-10-11 | 42 | 2012-10-11 | 2012-10-11 | 1d? |  | 邓燕鸿; 高娴; 测试员2; 张泽卿; 程序员2; 程序员3; 刘文朋; 王聪朝; 王兆雪; 质量专家 | 80h | 2,200 | 2,200 |
| 74 | 3.5.2 | 娱乐活动 | manual | 1d? | 2012-10-11 | 2012-10-11 | 42 | 2012-10-11 | 2012-10-11 | 1d? |  | 邓燕鸿; 高娴; 测试员2; 张泽卿; 程序员2; 程序员3; 刘文朋; 王聪朝; 王兆雪; 质量专家 | 80h | 2,200 | 2,200 |
| 75 | 3.5.3 | 沟通 | manual | 1d? | 2012-10-11 | 2012-10-11 | 42 | 2012-10-11 | 2012-10-11 | 1d? |  | 邓燕鸿; 高娴; 测试员2; 张泽卿; 程序员2; 程序员3; 刘文朋; 王聪朝; 王兆雪; 质量专家 | 80h | 2,200 | 2,200 |
| 76 | 3.6 | 采购 | manual | 20d | 2012-10-11 | 2012-11-07 | 42 | 2012-10-11 | 2012-11-07 | 20d |  | 王聪朝 | 160h | 6,400 | 6,400 |
| 77 | 3.7 | 项目验收 | manual | 1d? | 2012-10-22 | 2012-10-22 | 43 | 2012-10-22 | 2012-10-22 | 1d? |  | 邓燕鸿; 刘文朋; 王聪朝; 王兆雪; 质量专家 | 40h | 1,200 | 1,200 |

| ID | WBS | Task | Type | Duration | Start | Finish | Predecessors | Baseline start | Baseline finish | Baseline duration | Total slack | Resources | Work | Cost | Baseline cost |
| --- | --- | --- | --- | --- | --- | --- | --- | --- | --- | --- | --- | --- | --- | --- | --- |
| 78 | 4 | **收尾** |  | 1d? | 2012-10-23 | 2012-10-23 |  | 2012-10-23 | 2012-10-23 | 1d? | 0d |  | 128h | 3,720 | 3,720 |
| 79 | 4.1 | 项目终验 | manual | 1d? | 2012-10-23 | 2012-10-23 | 77 | 2012-10-23 | 2012-10-23 | 1d? |  | 邓燕鸿; 刘文朋; 王聪朝; 王兆雪; 质量专家 | 40h | 1,200 | 1,200 |
| 80 | 4.2 | 结束采购 | manual | 1d? | 2012-10-23 | 2012-10-23 | 77 | 2012-10-23 | 2012-10-23 | 1d? |  | 王聪朝 | 8h | 320 | 320 |
| 81 | 4.3 | 项目内部收尾 | manual | 1d? | 2012-10-23 | 2012-10-23 | 77 | 2012-10-23 | 2012-10-23 | 1d? |  | 邓燕鸿; 高娴; 测试员2; 张泽卿; 程序员2; 程序员3; 刘文朋; 王聪朝; 王兆雪; 质量专家 | 80h | 2,200 | 2,200 |
