# 3.1 大学生电子商务网

Schedule from MS Project, 2012-09-13 to 2012-12-24, costs in ¥.

## Calendars

- 标准: Mon-Fri 08:00-12:00, 13:00-17:00; Sat-Sun off.

## Resources

| Resource | Group | Rate | Cost per use |
| --- | --- | --- | --- |
| 张明 | 项目经理 | 50 |  |
| 高鹏飞 | 需求专家 | 45 |  |
| 李一鸣 | 设计专家 | 50 |  |
| 叶小美 | UI专家 | 40 |  |
| 刘乐光 | 质量专家 | 40 |  |
| 王小山 | 程序员 | 35 |  |
| 刘帅 | 程序员 | 35 |  |
| 李爱国 | 程序员 | 30 |  |
| 常开心 | 测试员 | 35 |  |
| 艾美丽 | 测试员 | 30 |  |
| 团队建设费 |  |  |  |
| 测试货物 |  | 10 | 10 |
| 间接成本 |  |  |  |
| 储备 |  |  |  |

## Schedule

| ID | WBS | Task | Duration | Start | Finish | Predecessors | Baseline start | Baseline finish | Baseline duration | Total slack | Free slack | Resources | Work | Cost | Baseline cost |
| --- | --- | --- | --- | --- | --- | --- | --- | --- | --- | --- | --- | --- | --- | --- | --- |
| 1 | 1 | **启动** | 5d | 2012-09-13 | 2012-09-19 |  | 2012-09-13 | 2012-09-19 | 5d | 0d |  | 间接成本 [0.1%]; 储备 [0.1%] | 104h | 6,300 | 6,300 |
| 2 | 1.1 | 组建核心团队 | 1d | 2012-09-13 | 2012-09-13 |  | 2012-09-13 | 2012-09-13 | 1d | 0d |  | 张明; 叶小美; 李一鸣; 高鹏飞; 刘乐光 | 40h | 1,800 | 1,800 |
| 3 | 1.2 | 干系人分析 | 1d | 2012-09-14 | 2012-09-14 | 2 | 2012-09-14 | 2012-09-14 | 1d | 0d |  | 张明 | 8h | 400 | 400 |
| 4 | 1.3 | 里程碑计划 | 1d | 2012-09-17 | 2012-09-17 | 3 | 2012-09-17 | 2012-09-17 | 1d | 0d |  | 张明 | 8h | 400 | 400 |
| 5 | 1.4 | 制定项目章程 | 1d | 2012-09-18 | 2012-09-18 | 4 | 2012-09-18 | 2012-09-18 | 1d | 0d |  | 张明 | 8h | 400 | 400 |
| 6 | 1.5 | 项目启动大会 | 1d | 2012-09-19 | 2012-09-19 | 5 | 2012-09-19 | 2012-09-19 | 1d | 0d |  | 张明; 高鹏飞; 李一鸣; 叶小美; 刘乐光 | 40h | 1,800 | 1,800 |
| 7 | 2 | **规划** | 45d? | 2012-09-20 | 2012-11-21 |  | 2012-09-20 | 2012-11-21 | 45d? | 0d |  | 间接成本 [0.1%]; 储备 [0.1%] | 512h | 31,660 | 31,660 |
| 8 | 2.1 | **规划范围** | 18d? | 2012-09-20 | 2012-10-15 |  | 2012-09-20 | 2012-10-15 | 18d? | 0d |  |  | 208h | 9,600 | 9,600 |
| 9 | 2.1.1 | 制定需求说明书 | 10d | 2012-09-20 | 2012-10-03 | 6 | 2012-09-20 | 2012-10-03 | 10d | 0d |  | 高鹏飞 | 80h | 3,600 | 3,600 |
| 10 | 2.1.2 | 界面设计 | 5d | 2012-10-04 | 2012-10-10 | 9 | 2012-10-04 | 2012-10-10 | 5d | 0d |  | 叶小美 | 40h | 1,600 | 1,600 |
| 11 | 2.1.3 | 详细设计说明书 | 5d | 2012-10-04 | 2012-10-10 | 9 | 2012-10-04 | 2012-10-10 | 5d | 0d |  | 李一鸣 | 40h | 2,000 | 2,000 |
| 12 | 2.1.4 | 项目范围说明书 | 3d | 2012-10-04 | 2012-10-08 | 9 | 2012-10-04 | 2012-10-08 | 3d | 2d |  | 张明 | 24h | 1,200 | 1,200 |
| 13 | 2.1.5 | 创建WBS | 2d | 2012-10-11 | 2012-10-12 | 10, 11, 12 | 2012-10-11 | 2012-10-12 | 2d | 0d |  | 张明 | 16h | 800 | 800 |
| 14 | 2.1.6 | 形成范围基准 | 1d? | 2012-10-15 | 2012-10-15 | 13 | 2012-10-15 | 2012-10-15 | 1d? | 0d |  | 张明 | 8h | 400 | 400 |
| 15 | 2.2 | **规划时间** | 7d? | 2012-10-16 | 2012-10-24 |  | 2012-10-16 | 2012-10-24 | 7d? | 0d |  |  | 56h | 2,800 | 2,800 |
| 16 | 2.2.1 | 排列工作包顺序 | 1d? | 2012-10-16 | 2012-10-16 | 14 | 2012-10-16 | 2012-10-16 | 1d? | 0d |  | 张明 | 8h | 400 | 400 |
| 17 | 2.2.2 | 估算资源 | 2d | 2012-10-17 | 2012-10-18 | 16 | 2012-10-17 | 2012-10-18 | 2d | 0d |  | 张明 | 16h | 800 | 800 |
| 18 | 2.2.3 | 估算持续时间 | 2d | 2012-10-19 | 2012-10-22 | 17 | 2012-10-19 | 2012-10-22 | 2d | 0d |  | 张明 | 16h | 800 | 800 |
| 19 | 2.2.4 | 制定进度计划 | 1d? | 2012-10-23 | 2012-10-23 | 18 | 2012-10-23 | 2012-10-23 | 1d? | 0d |  | 张明 | 8h | 400 | 400 |
| 20 | 2.2.5 | 形成进度基准 | 1d? | 2012-10-24 | 2012-10-24 | 19 | 2012-10-24 | 2012-10-24 | 1d? | 0d |  | 张明 | 8h | 400 | 400 |
| 21 | 2.3 | **规划成本** | 6d? | 2012-10-25 | 2012-11-01 |  | 2012-10-25 | 2012-11-01 | 6d? | 0d |  |  | 48h | 2,400 | 2,400 |
| 22 | 2.3.1 | 项目成本估算 | 3d | 2012-10-25 | 2012-10-29 | 20 | 2012-10-25 | 2012-10-29 | 3d | 0d |  | 张明 | 24h | 1,200 | 1,200 |
| 23 | 2.3.2 | 项目预算 | 2d | 2012-10-30 | 2012-10-31 | 22 | 2012-10-30 | 2012-10-31 | 2d | 10d | 0d | 张明 | 16h | 800 | 800 |
| 24 | 2.3.3 | 形成范围基准 | 1d? | 2012-11-01 | 2012-11-01 | 23 | 2012-11-01 | 2012-11-01 | 1d? | 10d |  | 张明 | 8h | 400 | 400 |

| ID | WBS | Task | Duration | Start | Finish | Predecessors | Baseline start | Baseline finish | Baseline duration | Total slack | Free slack | Resources | Work | Cost | Baseline cost |
| --- | --- | --- | --- | --- | --- | --- | --- | --- | --- | --- | --- | --- | --- | --- | --- |
| 25 | 2.4 | **规划质量** | 8d | 2012-10-16 | 2012-10-25 |  | 2012-10-16 | 2012-10-25 | 8d | 2d |  |  | 64h | 2,560 | 2,560 |
| 26 | 2.4.1 | 制定测试计划 | 2d | 2012-10-16 | 2012-10-17 | 14 | 2012-10-16 | 2012-10-17 | 2d | 2d | 0d | 刘乐光 | 16h | 640 | 640 |
| 27 | 2.4.2 | 制定测试用例 | 6d | 2012-10-18 | 2012-10-25 | 26 | 2012-10-18 | 2012-10-25 | 6d | 2d |  | 刘乐光 | 48h | 1,920 | 1,920 |
| 28 | 2.5 | **规划人力资源** | 4d | 2012-10-30 | 2012-11-02 |  | 2012-10-30 | 2012-11-02 | 4d | 0d |  |  | 32h | 1,600 | 1,600 |
| 29 | 2.5.1 | 制定人力资源计划 | 2d | 2012-10-30 | 2012-10-31 | 27, 22 | 2012-10-30 | 2012-10-31 | 2d | 0d |  | 张明 | 16h | 800 | 800 |
| 30 | 2.5.2 | 制定人员配备管理计划 | 2d | 2012-11-01 | 2012-11-02 | 29 | 2012-11-01 | 2012-11-02 | 2d | 0d |  | 张明 | 16h | 800 | 800 |
| 31 | 2.6 | **规划沟通** | 2d | 2012-11-05 | 2012-11-06 |  | 2012-11-05 | 2012-11-06 | 2d | 0d |  |  | 16h | 800 | 800 |
| 32 | 2.6.1 | 制定沟通管理计划 | 2d | 2012-11-05 | 2012-11-06 | 30 | 2012-11-05 | 2012-11-06 | 2d | 0d |  | 张明 | 16h | 800 | 800 |
| 33 | 2.7 | **规划采购** | 7d | 2012-11-07 | 2012-11-15 |  | 2012-11-07 | 2012-11-15 | 7d | 0d |  |  | 56h | 2,800 | 2,800 |
| 34 | 2.7.1 | 自制外购分析 | 2d | 2012-11-07 | 2012-11-08 | 32 | 2012-11-07 | 2012-11-08 | 2d | 0d |  | 张明 | 16h | 800 | 800 |
| 35 | 2.7.2 | 制定采购文件 | 5d | 2012-11-09 | 2012-11-15 | 34 | 2012-11-09 | 2012-11-15 | 5d | 0d |  | 张明 | 40h | 2,000 | 2,000 |
| 36 | 2.8 | **规划风险** | 3d? | 2012-11-16 | 2012-11-20 |  | 2012-11-16 | 2012-11-20 | 3d? | 0d |  |  | 24h | 1,200 | 1,200 |
| 37 | 2.8.1 | 识别风险 | 1d? | 2012-11-16 | 2012-11-16 | 15, 21, 25, 28, 31, 33 | 2012-11-16 | 2012-11-16 | 1d? | 0d |  | 张明 | 8h | 400 | 400 |
| 38 | 2.8.2 | 风险分析 | 1d? | 2012-11-19 | 2012-11-19 | 37 | 2012-11-19 | 2012-11-19 | 1d? | 0d |  | 张明 | 8h | 400 | 400 |
| 39 | 2.8.3 | 制定风险登记册 | 1d? | 2012-11-20 | 2012-11-20 | 38 | 2012-11-20 | 2012-11-20 | 1d? | 0d |  | 张明 | 8h | 400 | 400 |
| 40 | 2.9 | 规划整合 | 1d? | 2012-11-21 | 2012-11-21 | 39 | 2012-11-21 | 2012-11-21 | 1d? | 0d |  | 张明 | 8h | 400 | 400 |
| 41 | 3 | **执行与监控** | 23d? | 2012-11-22 | 2012-12-24 |  | 2012-11-22 | 2012-12-24 | 23d? | 0d |  | 间接成本 [0.1%]; 储备 [0.1%] | 1072h | 60,770 | 60,770 |
| 42 | 3.1 | 组建项目团队 | 3d | 2012-11-22 | 2012-11-26 | 7 | 2012-11-22 | 2012-11-26 | 3d | 0d |  | 张明; 常开心; 艾美丽; 王小山; 刘帅; 李爱国 | 144h | 5,160 | 5,160 |
| 43 | 3.2 | **项目执行** | 18d? | 2012-11-27 | 2012-12-20 |  | 2012-11-27 | 2012-12-20 | 18d? | 0d |  |  | 296h | 10,040 | 10,040 |
| 44 | 3.2.1 | **用户模块** | 18d | 2012-11-27 | 2012-12-20 |  | 2012-11-27 | 2012-12-20 | 18d | 0d |  |  | 144h | 5,040 | 5,040 |
| 45 | 3.2.1.1 | 注册登录 | 3d | 2012-11-27 | 2012-11-29 | 42 | 2012-11-27 | 2012-11-29 | 3d | 0d |  | 王小山 | 24h | 840 | 840 |
| 46 | 3.2.1.2 | 首页 | 3d | 2012-11-30 | 2012-12-04 | 45 | 2012-11-30 | 2012-12-04 | 3d | 0d |  | 王小山 | 24h | 840 | 840 |
| 47 | 3.2.1.3 | 浏览商品 | 2d | 2012-12-05 | 2012-12-06 | 46 | 2012-12-05 | 2012-12-06 | 2d | 0d |  | 王小山 | 16h | 560 | 560 |
| 48 | 3.2.1.4 | 搜索商品 | 2d | 2012-12-07 | 2012-12-10 | 47 | 2012-12-07 | 2012-12-10 | 2d | 0d |  | 王小山 | 16h | 560 | 560 |
| 49 | 3.2.1.5 | 购物车 | 3d | 2012-12-11 | 2012-12-13 | 48 | 2012-12-11 | 2012-12-13 | 3d | 0d |  | 王小山 | 24h | 840 | 840 |
| 50 | 3.2.1.6 | 下单 | 2d | 2012-12-14 | 2012-12-17 | 49 | 2012-12-14 | 2012-12-17 | 2d | 0d |  | 王小山 | 16h | 560 | 560 |
| 51 | 3.2.1.7 | 个人配置 | 3d | 2012-12-18 | 2012-12-20 | 50 | 2012-12-18 | 2012-12-20 | 3d | 0d |  | 王小山 | 24h | 840 | 840 |

| ID | WBS | Task | Duration | Start | Finish | Predecessors | Baseline start | Baseline finish | Baseline duration | Total slack | Free slack | Resources | Work | Cost | Baseline cost |
| --- | --- | --- | --- | --- | --- | --- | --- | --- | --- | --- | --- | --- | --- | --- | --- |
| 52 | 3.2.2 | **商家模块** | 11d | 2012-11-27 | 2012-12-11 |  | 2012-11-27 | 2012-12-11 | 11d | 7d |  |  | 88h | 3,080 | 3,080 |
| 53 | 3.2.2.1 | 注册入住 | 2d | 2012-11-27 | 2012-11-28 | 42 | 2012-11-27 | 2012-11-28 | 2d | 7d | 0d | 刘帅 | 16h | 560 | 560 |
| 54 | 3.2.2.2 | 商品管理 | 3d | 2012-11-29 | 2012-12-03 | 53 | 2012-11-29 | 2012-12-03 | 3d | 7d | 0d | 刘帅 | 24h | 840 | 840 |
| 55 | 3.2.2.3 | 订单处理 | 2d | 2012-12-04 | 2012-12-05 | 54 | 2012-12-04 | 2012-12-05 | 2d | 7d | 0d | 刘帅 | 16h | 560 | 560 |
| 56 | 3.2.2.4 | 统计 | 2d | 2012-12-06 | 2012-12-07 | 55 | 2012-12-06 | 2012-12-07 | 2d | 7d | 0d | 刘帅 | 16h | 560 | 560 |
| 57 | 3.2.2.5 | 商家配置 | 2d | 2012-12-10 | 2012-12-11 | 56 | 2012-12-10 | 2012-12-11 | 2d | 7d |  | 刘帅 | 16h | 560 | 560 |
| 58 | 3.2.3 | **管理员模块** | 8d? | 2012-11-27 | 2012-12-06 |  | 2012-11-27 | 2012-12-06 | 8d? | 10d |  |  | 64h | 1,920 | 1,920 |
| 59 | 3.2.3.1 | 商家审核 | 2d | 2012-11-27 | 2012-11-28 | 42 | 2012-11-27 | 2012-11-28 | 2d | 10d | 0d | 李爱国 | 16h | 480 | 480 |
| 60 | 3.2.3.2 | 促销活动 | 3d | 2012-11-29 | 2012-12-03 | 59 | 2012-11-29 | 2012-12-03 | 3d | 10d | 0d | 李爱国 | 24h | 720 | 720 |
| 61 | 3.2.3.3 | 统计分析 | 1d? | 2012-12-04 | 2012-12-04 | 60 | 2012-12-04 | 2012-12-04 | 1d? | 10d | 0d | 李爱国 | 8h | 240 | 240 |
| 62 | 3.2.3.4 | 备份 | 2d | 2012-12-05 | 2012-12-06 | 61 | 2012-12-05 | 2012-12-06 | 2d | 10d |  | 李爱国 | 16h | 480 | 480 |
| 63 | 3.3 | **项目监控** | 12d? | 2012-11-27 | 2012-12-12 |  | 2012-11-27 | 2012-12-12 | 12d? | 8d |  |  | 168h | 7,210 | 7,210 |
| 64 | 3.3.1 | 各项指标监控 | 10d? | 2012-11-27 | 2012-12-10 | 42 | 2012-11-27 | 2012-12-10 | 10d? | 8d | 0d | 常开心; 张明 [10%]; 艾美丽; 测试货物 [2000%] | 24h | 1,130 | 1,130 |
| 65 | 3.3.2 | 监控评审 | 1d? | 2012-12-11 | 2012-12-11 | 64 | 2012-12-11 | 2012-12-11 | 1d? | 8d | 0d | 李一鸣; 张明; 高鹏飞; 刘乐光 | 32h | 1,480 | 1,480 |
| 66 | 3.3.3 | 变更评审 | 1d? | 2012-12-12 | 2012-12-12 | 65 | 2012-12-12 | 2012-12-12 | 1d? | 8d |  | 李一鸣; 张明; 高鹏飞; 刘乐光 | 32h | 1,480 | 1,480 |
| 67 | 3.3.4 | 例会 | 10d? | 2012-11-27 | 2012-12-10 | 42 | 2012-11-27 | 2012-12-10 | 10d? | 10d |  | 叶小美; 常开心; 艾美丽; 王小山; 刘帅; 李爱国; 李一鸣; 张明 [10%]; 高鹏飞; 刘乐光 | 80h | 3,120 | 3,120 |
| 68 | 3.4 | **管理干系人** | 10d? | 2012-11-27 | 2012-12-10 |  | 2012-11-27 | 2012-12-10 | 10d? | 10d |  |  | 24h | 1,200 | 1,200 |
| 69 | 3.4.1 | 发布项目信息 | 10d? | 2012-11-27 | 2012-12-10 | 42 | 2012-11-27 | 2012-12-10 | 10d? | 10d |  | 张明 [10%] | 8h | 400 | 400 |
| 70 | 3.4.2 | 报告监控指标 | 10d? | 2012-11-27 | 2012-12-10 | 42 | 2012-11-27 | 2012-12-10 | 10d? | 10d |  | 张明 [10%] | 8h | 400 | 400 |
| 71 | 3.4.3 | 干系人沟通 | 2d? | 2012-11-27 | 2012-11-28 | 42 | 2012-11-27 | 2012-11-28 | 2d? | 18d |  | 张明 [50%] | 8h | 400 | 400 |
| 72 | 3.5 | **团队建设** | 1d? | 2012-11-27 | 2012-11-27 |  | 2012-11-27 | 2012-11-27 | 1d? | 19d |  |  | 240h | 12,360 | 12,360 |
| 73 | 3.5.1 | 培训 | 1d? | 2012-11-27 | 2012-11-27 | 42 | 2012-11-27 | 2012-11-27 | 1d? | 19d |  | 叶小美; 常开心; 艾美丽; 王小山; 刘帅; 李爱国; 李一鸣; 张明; 高鹏飞; 刘乐光; 团队建设费 [0.1%] | 80h | 5,120 | 5,120 |
| 74 | 3.5.2 | 娱乐活动 | 1d? | 2012-11-27 | 2012-11-27 | 42 | 2012-11-27 | 2012-11-27 | 1d? | 19d |  | 叶小美; 常开心; 艾美丽; 王小山; 刘帅; 李爱国; 李一鸣; 张明; 高鹏飞; 刘乐光; 团队建设费 [0.1%] | 80h | 4,120 | 4,120 |
| 75 | 3.5.3 | 沟通 | 1d? | 2012-11-27 | 2012-11-27 | 42 | 2012-11-27 | 2012-11-27 | 1d? | 19d |  | 叶小美; 常开心; 艾美丽; 王小山; 刘帅; 李爱国; 李一鸣; 张明; 高鹏飞; 刘乐光 | 80h | 3,120 | 3,120 |
| 76 | 3.6 | 采购 | 20d | 2012-11-27 | 2012-12-24 | 42 | 2012-11-27 | 2012-12-24 | 20d | 0d |  | 张明 | 160h | 8,000 | 8,000 |
| 77 | 3.7 | 项目验收 | 1d? | 2012-12-21 | 2012-12-21 | 43 | 2012-12-21 | 2012-12-21 | 1d? | 0d |  | 叶小美; 李一鸣; 张明; 高鹏飞; 刘乐光 | 40h | 1,800 | 1,800 |

| ID | WBS | Task | Duration | Start | Finish | Predecessors | Baseline start | Baseline finish | Baseline duration | Total slack | Resources | Work | Cost | Baseline cost |
| --- | --- | --- | --- | --- | --- | --- | --- | --- | --- | --- | --- | --- | --- | --- |
| 78 | 4 | **收尾** | 73d? | 2012-09-13 | 2012-12-24 |  | 2012-09-13 | 2012-12-24 | 73d? | 0d | 间接成本 [0.1%]; 储备 [0.1%] | 128h | 6,820 | 6,820 |
| 79 | 4.1 | 项目终验 | 1d? | 2012-12-24 | 2012-12-24 | 77 | 2012-12-24 | 2012-12-24 | 1d? | 0d | 叶小美; 李一鸣; 张明; 高鹏飞; 刘乐光 | 40h | 1,800 | 1,800 |
| 80 | 4.2 | 结束采购 | 1d? | 2012-12-24 | 2012-12-24 | 77 | 2012-12-24 | 2012-12-24 | 1d? | 0d | 张明 | 8h | 400 | 400 |
| 81 | 4.3 | 项目内部收尾 | 1d? | 2012-12-24 | 2012-12-24 | 77 | 2012-12-24 | 2012-12-24 | 1d? | 0d | 叶小美; 常开心; 艾美丽; 王小山; 刘帅; 李爱国; 李一鸣; 张明; 高鹏飞; 刘乐光 | 80h | 3,120 | 3,120 |
